# Projet MADERA

Schedule from MS Project, 2017-02-28 to 2018-06-28, 7 hours a day, costs in €, A marks actual dates.

## Calendars

- Standard: Mon-Fri 09:00-12:00, 14:00-18:00; Sat-Sun off.

## Resources

| Resource | Rate |
| --- | --- |
| BRAZALLOTTO CAZES Tom | 25 |
| ROUER Marika | 26 |
| GRABIE Eliott | 22 |
| CAZALS Thomas | 27 |
| VILELA-MARTINS Mathieu | 28.5 |
| Chef de Projet, ROUER Marika | 35 |
| Chef de projet, VILELA-MARTINS Mathieu | 35 |
| Chef de projet, GRABIE Eliott | 35 |
| Chef de projet, BRAZALLOTTO CAZES Tom | 35 |
| Chef de projet, CAZALS Thomas | 35 |

## Schedule

| ID | WBS | Task | Type | Duration | Start | Finish | Predecessors | Complete | Constraint | Resources | Work | Actual work | Cost | Actual cost |
| --- | --- | --- | --- | --- | --- | --- | --- | --- | --- | --- | --- | --- | --- | --- |
| 1 | 1 | **Livrable 1** |  | 76.33d | 2017-02-28 A | 2017-06-14 A |  | 100% |  |  | 711.1h | 711.1h | 18,589.38 | 18,589.38 |
| 2 | 1.1 | Réunion n°1 | milestone | 2h | 2017-02-28 A | 2017-02-28 A |  | 100% |  | BRAZALLOTTO CAZES Tom; CAZALS Thomas; GRABIE Eliott; Chef de Projet, ROUER Marika | 6h | 6h | 148 | 148 |
| 3 | 1.2 | Contexte et existant |  | 2d | 2017-02-28 A | 2017-03-02 A | 2 | 100% |  | BRAZALLOTTO CAZES Tom | 14h | 14h | 350 | 350 |
| 4 | 1.3 | Enjeux |  | 2d | 2017-02-28 A | 2017-03-02 A | 2 | 100% |  | GRABIE Eliott | 14h | 14h | 308 | 308 |
| 5 | 1.4 | Périmètre |  | 1d | 2017-02-28 A | 2017-03-01 A | 2 | 100% |  | Chef de Projet, ROUER Marika | 7h | 7h | 245 | 245 |
| 6 | 1.5 | Contraintes |  | 1.5d | 2017-02-28 A | 2017-03-01 A | 2 | 100% |  | CAZALS Thomas | 10.5h | 10.5h | 283.5 | 283.5 |
| 7 | 1.6 | **Objectifs** |  | 19.9d | 2017-02-28 A | 2017-03-28 A |  | 100% |  |  | 202.9h | 202.9h | 5,189.25 | 5,189.25 |
| 8 | 1.6.1 | Produit attendu |  | 2.5d | 2017-02-28 A | 2017-03-02 A | 2 | 100% |  | VILELA-MARTINS Mathieu | 17.5h | 17.5h | 498.75 | 498.75 |
| 9 | 1.6.2 | Réunion n°2 | milestone | 1.3h | 2017-03-08 A | 2017-03-08 A | 3, 4, 5, 6, 8 | 100% | start no earlier than 2017-03-08 | BRAZALLOTTO CAZES Tom; CAZALS Thomas; GRABIE Eliott; VILELA-MARTINS Mathieu; Chef de Projet, ROUER Marika | 5.2h | 5.2h | 133.25 | 133.25 |
| 10 | 1.6.3 | Planning |  | 4d | 2017-03-08 A | 2017-03-14 A | 9 | 100% |  | BRAZALLOTTO CAZES Tom; CAZALS Thomas; GRABIE Eliott; VILELA-MARTINS Mathieu; Chef de Projet, ROUER Marika | 112h | 112h | 2,870 | 2,870 |
| 11 | 1.6.4 | Réunion n°3 | milestone | 1.3h | 2017-03-23 A | 2017-03-23 A | 10 | 100% | start no earlier than 2017-03-23 | BRAZALLOTTO CAZES Tom; CAZALS Thomas; GRABIE Eliott; VILELA-MARTINS Mathieu; Chef de Projet, ROUER Marika | 5.2h | 5.2h | 133.25 | 133.25 |
| 12 | 1.6.5 | Budget |  | 3d | 2017-03-23 A | 2017-03-28 A | 11 | 100% |  | BRAZALLOTTO CAZES Tom; CAZALS Thomas; GRABIE Eliott; Chef de Projet, ROUER Marika | 63h | 63h | 1,554 | 1,554 |
| 13 | 1.7 | Réunion n°4 | milestone | 1h | 2017-04-11 A | 2017-04-11 A | 12 | 100% | start no earlier than 2017-04-11 | BRAZALLOTTO CAZES Tom; CAZALS Thomas; GRABIE Eliott; VILELA-MARTINS Mathieu; Chef de Projet, ROUER Marika | 4h | 4h | 102.5 | 102.5 |
| 14 | 1.8 | **Fonctions et sous-fonctions** |  | 7d | 2017-04-11 A | 2017-04-20 A | 13 | 100% |  |  | 154h | 154h | 3,993.5 | 3,993.5 |
| 15 | 1.8.1 | Analyse Fonctionnelle |  | 4d | 2017-04-11 A | 2017-04-17 A | 13 | 100% |  | BRAZALLOTTO CAZES Tom; CAZALS Thomas; GRABIE Eliott; VILELA-MARTINS Mathieu; Chef de Projet, ROUER Marika | 112h | 112h | 2,870 | 2,870 |
| 16 | 1.8.2 | Besoins en langage métier |  | 3d | 2017-04-17 A | 2017-04-20 A | 15 | 100% |  | BRAZALLOTTO CAZES Tom; VILELA-MARTINS Mathieu | 42h | 42h | 1,123.5 | 1,123.5 |
| 17 | 1.9 | Processus opérationnel |  | 5d | 2017-04-17 A | 2017-04-24 A | 13, 15 | 100% |  | CAZALS Thomas | 35h | 35h | 945 | 945 |
| 18 | 1.10 | Règle de gestion |  | 3d | 2017-04-17 A | 2017-04-20 A | 13, 15 | 100% |  | GRABIE Eliott; Chef de Projet, ROUER Marika | 21h | 21h | 462 | 462 |
| 19 | 1.11 | Réunion n°5 | milestone | 1.3h | 2017-04-24 A | 2017-04-24 A | 14, 17, 18 | 100% | start no earlier than 2017-04-24 | BRAZALLOTTO CAZES Tom; CAZALS Thomas; GRABIE Eliott; VILELA-MARTINS Mathieu; Chef de Projet, ROUER Marika | 5.2h | 5.2h | 133.25 | 133.25 |
| 20 | 1.12 | PBS / WBS |  | 2d | 2017-04-24 A | 2017-04-26 A | 19 | 100% | start no earlier than 2017-04-24 | VILELA-MARTINS Mathieu; CAZALS Thomas; Chef de Projet, ROUER Marika | 28h | 28h | 777 | 777 |
| 21 | 1.13 | Réunion n°6 | milestone | 2.15h | 2017-04-26 A | 2017-04-26 A | 20, 19 | 100% | start no earlier than 2017-04-25 | BRAZALLOTTO CAZES Tom; CAZALS Thomas; GRABIE Eliott; VILELA-MARTINS Mathieu; Chef de Projet, ROUER Marika | 8.6h | 8.6h | 220.38 | 220.38 |
| 22 | 1.14 | **Données à traiter** |  | 2d | 2017-04-26 A | 2017-04-28 A | 21 | 100% |  |  | 42h | 42h | 1,218 | 1,218 |
| 23 | 1.14.1 | Contraintes à prendre en compte |  | 1.5d | 2017-04-26 A | 2017-04-28 A | 21 | 100% |  | BRAZALLOTTO CAZES Tom; CAZALS Thomas [50%] | 15.75h | 15.75h | 404.25 | 404.25 |
| 24 | 1.14.2 | Volumétrie |  | 2d | 2017-04-26 A | 2017-04-28 A | 21 | 100% |  | Chef de Projet, ROUER Marika | 14h | 14h | 490 | 490 |
| 25 | 1.14.3 | Reprise d’historique à prévoir et stratégie de migration envisagée |  | 1d | 2017-04-26 A | 2017-04-27 A | 21 | 100% |  | VILELA-MARTINS Mathieu | 7h | 7h | 199.5 | 199.5 |
| 26 | 1.14.4 | Conservation |  | 0.5d | 2017-04-26 A | 2017-04-27 A | 21 | 100% |  | GRABIE Eliott; CAZALS Thomas [50%] | 5.25h | 5.25h | 124.25 | 124.25 |
| 27 | 1.15 | Réunion n°7 | milestone | 1h | 2017-05-04 A | 2017-05-04 A | 22 | 100% | start no earlier than 2017-05-04 | BRAZALLOTTO CAZES Tom; CAZALS Thomas; GRABIE Eliott; VILELA-MARTINS Mathieu; Chef de Projet, ROUER Marika | 4h | 4h | 102.5 | 102.5 |

| ID | WBS | Task | Type | Duration | Start | Finish | Predecessors | Complete | Total slack | Free slack | Constraint | Resources | Work | Actual work | Cost | Actual cost |
| --- | --- | --- | --- | --- | --- | --- | --- | --- | --- | --- | --- | --- | --- | --- | --- | --- |
| 28 | 1.16 | **Reportings/Statistiques** |  | 3d | 2017-05-04 A | 2017-05-09 A | 27 | 100% |  |  |  |  | 21h | 21h | 462 | 462 |
| 29 | 1.16.1 | Liste des rapports à produire |  | 0.5d | 2017-05-04 A | 2017-05-04 A | 27 | 100% |  |  |  | GRABIE Eliott | 3.5h | 3.5h | 77 | 77 |
| 30 | 1.16.2 | Souplesse attendue |  | 0.5d | 2017-05-04 A | 2017-05-05 A | 29 | 100% |  |  |  | GRABIE Eliott | 3.5h | 3.5h | 77 | 77 |
| 31 | 1.16.3 | Support |  | 1d | 2017-05-05 A | 2017-05-08 A | 30 | 100% |  |  |  | GRABIE Eliott | 7h | 7h | 154 | 154 |
| 32 | 1.16.4 | Périodicité |  | 1d | 2017-05-08 A | 2017-05-09 A | 31 | 100% |  |  |  | GRABIE Eliott | 7h | 7h | 154 | 154 |
| 33 | 1.17 | **Utilisateurs/Ergonomie** |  | 1d | 2017-05-04 A | 2017-05-05 A | 27 | 100% |  |  |  |  | 7h | 7h | 245 | 245 |
| 34 | 1.17.1 | Nombre d’utilisateurs |  | 0.25d | 2017-05-04 A | 2017-05-04 A | 27 | 100% |  |  |  | Chef de Projet, ROUER Marika | 1.75h | 1.75h | 61.25 | 61.25 |
| 35 | 1.17.2 | Profils |  | 0.25d | 2017-05-04 A | 2017-05-04 A | 34 | 100% |  |  |  | Chef de Projet, ROUER Marika | 1.75h | 1.75h | 61.25 | 61.25 |
| 36 | 1.17.3 | Contraintes d’ergonomie |  | 0.5d | 2017-05-04 A | 2017-05-05 A | 35 | 100% |  |  |  | Chef de Projet, ROUER Marika | 3.5h | 3.5h | 122.5 | 122.5 |
| 37 | 1.18 | **Performances** |  | 2.5d | 2017-05-04 A | 2017-05-08 A | 27 | 100% |  |  |  |  | 17.5h | 17.5h | 437.5 | 437.5 |
| 38 | 1.18.1 | Temps de réponse |  | 0.5d | 2017-05-04 A | 2017-05-04 A | 27 | 100% |  |  |  | BRAZALLOTTO CAZES Tom | 3.5h | 3.5h | 87.5 | 87.5 |
| 39 | 1.18.2 | Nombre d’accès simultanés |  | 0.5d | 2017-05-04 A | 2017-05-05 A | 38 | 100% |  |  |  | BRAZALLOTTO CAZES Tom | 3.5h | 3.5h | 87.5 | 87.5 |
| 40 | 1.18.3 | Durée de traitement |  | 0.5d | 2017-05-05 A | 2017-05-05 A | 39 | 100% |  |  |  | BRAZALLOTTO CAZES Tom | 3.5h | 3.5h | 87.5 | 87.5 |
| 41 | 1.18.4 | Fréquence de traitement |  | 1d | 2017-05-05 A | 2017-05-08 A | 40 | 100% |  |  |  | BRAZALLOTTO CAZES Tom | 7h | 7h | 175 | 175 |
| 42 | 1.19 | **Interfaces avec autres applications** |  | 5.5d | 2017-05-04 A | 2017-05-11 A | 27 | 100% |  |  |  |  | 77h | 77h | 2,136.75 | 2,136.75 |
| 43 | 1.19.1 | Entrée / Sortie |  | 1d | 2017-05-04 A | 2017-05-05 A | 27 | 100% |  |  |  | CAZALS Thomas; VILELA-MARTINS Mathieu | 14h | 14h | 388.5 | 388.5 |
| 44 | 1.19.2 | Format et codification |  | 0.5d | 2017-05-05 A | 2017-05-05 A | 43 | 100% |  |  |  | CAZALS Thomas; VILELA-MARTINS Mathieu | 7h | 7h | 194.25 | 194.25 |
| 45 | 1.19.3 | Dessin d’enregistrement |  | 2d | 2017-05-05 A | 2017-05-09 A | 44 | 100% |  |  |  | CAZALS Thomas; VILELA-MARTINS Mathieu | 28h | 28h | 777 | 777 |
| 46 | 1.19.4 | Fréquence |  | 1d | 2017-05-09 A | 2017-05-10 A | 45 | 100% |  |  |  | CAZALS Thomas; VILELA-MARTINS Mathieu | 14h | 14h | 388.5 | 388.5 |
| 47 | 1.19.5 | Volumétrie |  | 1d | 2017-05-10 A | 2017-05-11 A | 46 | 100% |  |  |  | CAZALS Thomas; VILELA-MARTINS Mathieu | 14h | 14h | 388.5 | 388.5 |
| 48 | 1.20 | Réunion n°8 | milestone | 2.3h | 2017-05-31 A | 2017-05-31 A | 28, 33, 37, 42 | 100% |  |  | start no earlier than 2017-05-31 | BRAZALLOTTO CAZES Tom; CAZALS Thomas; GRABIE Eliott; VILELA-MARTINS Mathieu; Chef de Projet, ROUER Marika | 9.2h | 9.2h | 235.75 | 235.75 |
| 49 | 1.21 | Réalisation du PowerPoint Livrable 1 |  | 0.5d | 2017-05-31 A | 2017-05-31 A | 48 | 100% |  |  |  | BRAZALLOTTO CAZES Tom; CAZALS Thomas; GRABIE Eliott; VILELA-MARTINS Mathieu; Chef de Projet, ROUER Marika [50%] | 14h | 14h | 358.75 | 358.75 |
| 50 | 1.22 | Réunion n°9 |  | 2.3h | 2017-06-14 A | 2017-06-14 A | 49 | 100% |  |  | start no earlier than 2017-06-14 | BRAZALLOTTO CAZES Tom; CAZALS Thomas; GRABIE Eliott; VILELA-MARTINS Mathieu; Chef de Projet, ROUER Marika | 9.2h | 9.2h | 235.75 | 235.75 |
| 51 | 2 | Soutenance Livrable 1 | milestone | 2h | 2017-06-26 | 2017-06-26 |  |  | 158.24d | 0d | start no earlier than 2017-06-26 | BRAZALLOTTO CAZES Tom; CAZALS Thomas; GRABIE Eliott; VILELA-MARTINS Mathieu; Chef de Projet, ROUER Marika | 10h |  | 275 |  |

| ID | WBS | Task | Type | Duration | Start | Finish | Predecessors | Total slack | Free slack | Constraint | Resources | Work | Cost |
| --- | --- | --- | --- | --- | --- | --- | --- | --- | --- | --- | --- | --- | --- |
| 52 | 3 | **Livrable 2** |  | 52.29d | 2017-06-26 | 2017-09-06 | 51 | 157.29d | 1.43d |  |  | 841h | 23,413.95 |
| 53 | 3.1 | Réunion n°10 |  | 1.3h | 2017-06-26 | 2017-06-26 | 51 | 158.24d | 0d |  | GRABIE Eliott; ROUER Marika; VILELA-MARTINS Mathieu; Chef de projet, BRAZALLOTTO CAZES Tom; Chef de projet, CAZALS Thomas | 6.5h | 190.45 |
| 54 | 3.2 | UML & Merise |  | 10d | 2017-06-26 | 2017-07-10 | 53 | 158.24d | 0d |  | GRABIE Eliott; ROUER Marika | 140h | 3,360 |
| 55 | 3.3 | Séquences |  | 4d | 2017-06-26 | 2017-06-30 | 53 | 164.24d | 6d |  | Chef de projet, BRAZALLOTTO CAZES Tom | 28h | 980 |
| 56 | 3.4 | Dépendances externes |  | 3d | 2017-06-26 | 2017-06-29 | 53 | 165.24d | 7d |  | Chef de projet, CAZALS Thomas | 21h | 735 |
| 57 | 3.5 | Contrôles de saisies/données |  | 3d | 2017-06-26 | 2017-06-29 | 53 | 165.24d | 7d |  | VILELA-MARTINS Mathieu | 21h | 598.5 |
| 58 | 3.6 | Réunion n°11 |  | 2h | 2017-07-10 | 2017-07-10 | 54, 55, 56, 57 | 158.24d | 0d |  | GRABIE Eliott; ROUER Marika; VILELA-MARTINS Mathieu; Chef de projet, BRAZALLOTTO CAZES Tom; Chef de projet, CAZALS Thomas | 10h | 293 |
| 59 | 3.7 | Architecture de la BDD |  | 5d | 2017-07-10 | 2017-07-17 | 58 | 158.24d | 0d |  | GRABIE Eliott; ROUER Marika; VILELA-MARTINS Mathieu; Chef de projet, BRAZALLOTTO CAZES Tom [50%]; Chef de projet, CAZALS Thomas [50%] | 140h | 3,902.5 |
| 60 | 3.8 | Définition de l’ergonomie et de l’IHM (Mock-Up) |  | 10d | 2017-07-17 | 2017-07-31 | 59 | 158.24d | 0d |  | VILELA-MARTINS Mathieu [50%]; Chef de projet, BRAZALLOTTO CAZES Tom | 70h | 2,222.5 |
| 61 | 3.9 | Réunion n°12 |  | 2h | 2017-07-31 | 2017-08-01 | 60 | 158.24d | 0.96d |  | GRABIE Eliott; ROUER Marika; VILELA-MARTINS Mathieu; Chef de projet, BRAZALLOTTO CAZES Tom; Chef de projet, CAZALS Thomas | 10h | 293 |
| 62 | 3.10 | Description des modules de l’application et des traitements de l’information associés |  | 5d | 2017-08-02 | 2017-08-08 | 61 | 157.29d | 0d | start no earlier than 2017-08-02 | Chef de projet, CAZALS Thomas [50%]; ROUER Marika; GRABIE Eliott [50%] | 70h | 1,907.5 |
| 63 | 3.11 | Définition de l’environnement de développement de l’application |  | 5d | 2017-08-09 | 2017-08-22 | 62 | 157.29d | 0d | start no earlier than 2017-06-19 | GRABIE Eliott; ROUER Marika; VILELA-MARTINS Mathieu; Chef de projet, BRAZALLOTTO CAZES Tom [50%]; Chef de projet, CAZALS Thomas [50%] | 140h | 3,902.5 |
| 64 | 3.12 | Méthode de développement |  | 3d | 2017-08-23 | 2017-08-25 | 63 | 157.29d | 0d |  | Chef de projet, BRAZALLOTTO CAZES Tom [50%]; VILELA-MARTINS Mathieu | 31.5h | 966 |
| 65 | 3.13 | **Argumentation des choix d’outils de développement et de base de données associées** |  | 5d | 2017-08-28 | 2017-09-01 |  | 157.29d | 0d |  |  | 77h | 1,988 |
| 66 | 3.13.1 | Critères |  | 2d | 2017-08-28 | 2017-08-29 | 64 | 160.29d |  |  | Chef de projet, BRAZALLOTTO CAZES Tom [50%]; Chef de projet, CAZALS Thomas [50%] | 14h | 490 |
| 67 | 3.13.2 | Coûts |  | 5d | 2017-08-28 | 2017-09-01 | 64 | 157.29d |  |  | GRABIE Eliott | 35h | 770 |
| 68 | 3.13.3 | Ressources |  | 4d | 2017-08-28 | 2017-08-31 | 64 | 158.29d |  |  | ROUER Marika | 28h | 728 |
| 69 | 3.14 | Réunion n°13 |  | 2h | 2017-09-04 | 2017-09-04 | 62, 63, 64, 65 | 157.29d | 0d |  | BRAZALLOTTO CAZES Tom; CAZALS Thomas; GRABIE Eliott; ROUER Marika; VILELA-MARTINS Mathieu | 10h | 257 |
| 70 | 3.15 | PowerPoint livrable 2 |  | 2d | 2017-09-04 | 2017-09-06 | 69 | 157.29d | 0d |  | GRABIE Eliott; ROUER Marika; VILELA-MARTINS Mathieu; Chef de projet, BRAZALLOTTO CAZES Tom [50%]; Chef de projet, CAZALS Thomas [50%] | 56h | 1,561 |
| 71 | 3.16 | Réunion n°14 |  | 2h | 2017-09-06 | 2017-09-06 | 70 | 157.29d |  |  | BRAZALLOTTO CAZES Tom; CAZALS Thomas; GRABIE Eliott; ROUER Marika; VILELA-MARTINS Mathieu | 10h | 257 |
| 72 | 4 | Soutenance Livrable 2 | milestone | 2h | 2017-09-08 | 2017-09-08 | 52 | 155.86d | 0d | start no earlier than 2017-09-08 | BRAZALLOTTO CAZES Tom; CAZALS Thomas; GRABIE Eliott; ROUER Marika; VILELA-MARTINS Mathieu | 10h | 257 |
| 73 | 5 | **Livrable 3** |  | 33.14d | 2017-09-08 | 2017-10-25 | 72 | 155.86d | 130.57d |  |  | 558h | 15,517 |
| 74 | 5.1 | Réunion n°15 |  | 2h | 2017-09-08 | 2017-09-08 |  | 155.86d | 0d |  | BRAZALLOTTO CAZES Tom; CAZALS Thomas; Chef de projet, GRABIE Eliott; ROUER Marika; VILELA-MARTINS Mathieu | 10h | 283 |
| 75 | 5.2 | Plannification des tâches |  | 4d | 2017-09-08 | 2017-09-14 | 74 | 155.86d | 0d |  | Chef de projet, GRABIE Eliott; ROUER Marika | 42h | 1,218 |
| 76 | 5.3 | Scénarios de tests |  | 6d | 2017-09-14 | 2017-09-22 | 75 | 155.86d | 0d |  | BRAZALLOTTO CAZES Tom; CAZALS Thomas; VILELA-MARTINS Mathieu | 126h | 3,381 |
| 77 | 5.4 | Réunion n°16 |  | 2h | 2017-09-22 | 2017-09-22 | 76 | 155.86d | 0d |  | BRAZALLOTTO CAZES Tom; CAZALS Thomas; Chef de projet, GRABIE Eliott; ROUER Marika; VILELA-MARTINS Mathieu | 10h | 283 |

| ID | WBS | Task | Type | Duration | Start | Finish | Predecessors | Total slack | Free slack | Constraint | Resources | Work | Cost |
| --- | --- | --- | --- | --- | --- | --- | --- | --- | --- | --- | --- | --- | --- |
| 78 | 5.5 | **Budget prévisionnel** |  | 10d | 2017-09-22 | 2017-10-06 |  | 155.86d |  |  |  | 119h | 3,374 |
| 79 | 5.5.1 | Investissement |  | 4d | 2017-09-22 | 2017-09-28 | 77 | 155.86d | 0d |  | Chef de projet, GRABIE Eliott; ROUER Marika; VILELA-MARTINS Mathieu | 56h | 1,652 |
| 80 | 5.5.2 | Charges |  | 3d | 2017-09-28 | 2017-10-03 | 79 | 155.86d | 0d |  | Chef de projet, GRABIE Eliott; BRAZALLOTTO CAZES Tom | 31.5h | 892.5 |
| 81 | 5.5.3 | Coûts humains internes et externes |  | 3d | 2017-10-03 | 2017-10-06 | 80 | 155.86d | 0d |  | CAZALS Thomas; BRAZALLOTTO CAZES Tom | 31.5h | 829.5 |
| 82 | 5.6 | Politique de sécurisation de l'application |  | 4d | 2017-10-06 | 2017-10-12 | 81 | 155.86d | 0d |  | VILELA-MARTINS Mathieu; CAZALS Thomas | 56h | 1,554 |
| 83 | 5.7 | Plan de gestion des risques |  | 6d | 2017-10-12 | 2017-10-20 | 82 | 155.86d | 0d |  | Chef de projet, GRABIE Eliott; BRAZALLOTTO CAZES Tom; ROUER Marika | 105h | 2,877 |
| 84 | 5.8 | Réunion n°17 |  | 2h | 2017-10-20 | 2017-10-23 | 83 | 155.86d | 0d |  | BRAZALLOTTO CAZES Tom; CAZALS Thomas; Chef de projet, GRABIE Eliott; ROUER Marika; VILELA-MARTINS Mathieu | 10h | 283 |
| 85 | 5.9 | PowerPoint livrable 3 |  | 2d | 2017-10-23 | 2017-10-25 | 84 | 155.86d | 0d |  | BRAZALLOTTO CAZES Tom; CAZALS Thomas; Chef de projet, GRABIE Eliott; ROUER Marika; VILELA-MARTINS Mathieu | 70h | 1,981 |
| 86 | 5.10 | Réunion n°18 |  | 2h | 2017-10-25 | 2017-10-25 | 85 | 155.86d |  |  | BRAZALLOTTO CAZES Tom; CAZALS Thomas; Chef de projet, GRABIE Eliott; ROUER Marika; VILELA-MARTINS Mathieu | 10h | 283 |
| 87 | 6 | Soutenance Livrable 3 | milestone | 2h | 2018-04-26 | 2018-04-26 | 73 | 25.29d | 0d | start no earlier than 2018-04-26 | BRAZALLOTTO CAZES Tom; CAZALS Thomas; GRABIE Eliott; ROUER Marika; VILELA-MARTINS Mathieu | 10h | 257 |
| 88 | 7 | **Livrable 4** |  | 19.43d | 2018-04-26 | 2018-05-23 | 87 | 25.29d |  |  |  | 410.5h | 10,938.25 |
| 89 | 7.1 | Réunion n°19 |  | 2h | 2018-04-26 | 2018-04-26 | 87 | 25.29d | 0d |  | BRAZALLOTTO CAZES Tom; CAZALS Thomas; Chef de projet, VILELA-MARTINS Mathieu; GRABIE Eliott; ROUER Marika | 10h | 270 |
| 90 | 7.2 | Plan de management du projet |  | 2.5d | 2018-04-26 | 2018-05-01 | 89 | 26.79d | 1.5d |  | Chef de projet, VILELA-MARTINS Mathieu | 17.5h | 612.5 |
| 91 | 7.3 | Choix technologique et stratégie retenus |  | 3d | 2018-04-26 | 2018-05-01 | 89 | 26.29d | 1d |  | CAZALS Thomas | 21h | 567 |
| 92 | 7.4 | Solutions techniques proposée |  | 3d | 2018-04-26 | 2018-05-01 | 89 | 26.29d | 1d |  | GRABIE Eliott | 21h | 462 |
| 93 | 7.5 | Politique de sécurisation de l'application |  | 3d | 2018-04-26 | 2018-05-01 | 89 | 26.29d | 1d |  | BRAZALLOTTO CAZES Tom | 21h | 525 |
| 94 | 7.6 | PRA / PCA |  | 4d | 2018-04-26 | 2018-05-02 | 89 | 25.29d | 0d |  | ROUER Marika | 28h | 728 |
| 95 | 7.7 | Réunion n°20 |  | 2h | 2018-05-02 | 2018-05-02 | 90, 91, 92, 93, 94 | 25.29d | 0d | finish no earlier than 2018-04-26 | BRAZALLOTTO CAZES Tom; CAZALS Thomas; Chef de projet, VILELA-MARTINS Mathieu; GRABIE Eliott; ROUER Marika | 10h | 270 |
| 96 | 7.8 | Descriptif des outils | milestone | 0d | 2018-05-02 | 2018-05-02 | 95 | 40.14d |  |  | GRABIE Eliott |  |  |
| 97 | 7.9 | Plan de déploiement et suivi de la mise en place de l'outil |  | 1.5d | 2018-05-02 | 2018-05-04 | 95 | 38.64d |  |  | Chef de projet, VILELA-MARTINS Mathieu; BRAZALLOTTO CAZES Tom | 21h | 630 |
| 98 | 7.10 | Plan de communication |  | 5d | 2018-05-02 | 2018-05-09 | 95 | 25.29d | 0d |  | CAZALS Thomas; ROUER Marika | 52.5h | 1,400 |
| 99 | 7.11 | Réunion n°21 |  | 2h | 2018-05-09 | 2018-05-10 | 98 | 25.29d | 0d | finish no earlier than 2018-04-26 | BRAZALLOTTO CAZES Tom; CAZALS Thomas; Chef de projet, VILELA-MARTINS Mathieu; GRABIE Eliott; ROUER Marika | 10h | 270 |
| 100 | 7.12 | Plan de formation des utilisateurs |  | 5d | 2018-05-10 | 2018-05-17 | 99 | 25.29d | 0d |  | BRAZALLOTTO CAZES Tom; VILELA-MARTINS Mathieu | 52.5h | 1,373.75 |
| 101 | 7.13 | Retour d'expérience |  | 2d | 2018-05-17 | 2018-05-21 | 100 | 25.29d | 0d |  | CAZALS Thomas; BRAZALLOTTO CAZES Tom; Chef de projet, VILELA-MARTINS Mathieu; GRABIE Eliott; ROUER Marika | 63h | 1,645 |
| 102 | 7.14 | Réunion n°22 |  | 2h | 2018-05-21 | 2018-05-21 | 101 | 25.29d | 0d | finish no earlier than 2018-04-26 | BRAZALLOTTO CAZES Tom; CAZALS Thomas; Chef de projet, VILELA-MARTINS Mathieu; GRABIE Eliott; ROUER Marika | 10h | 270 |
| 103 | 7.15 | PowerPoint livrable 4 |  | 2d | 2018-05-21 | 2018-05-23 | 102 | 25.29d | 0d |  | CAZALS Thomas; BRAZALLOTTO CAZES Tom; Chef de projet, VILELA-MARTINS Mathieu; GRABIE Eliott; ROUER Marika | 63h | 1,645 |
| 104 | 7.16 | Réunion n°23 |  | 2h | 2018-05-23 | 2018-05-23 | 103 | 25.29d |  | finish no earlier than 2018-04-26 | BRAZALLOTTO CAZES Tom; CAZALS Thomas; Chef de projet, VILELA-MARTINS Mathieu; GRABIE Eliott; ROUER Marika | 10h | 270 |
| 105 | 8 | Soutenance Livrable 4 | milestone | 2h | 2018-06-28 | 2018-06-28 | 88 | 0d |  | start no earlier than 2018-06-28 | BRAZALLOTTO CAZES Tom; CAZALS Thomas; GRABIE Eliott; ROUER Marika; VILELA-MARTINS Mathieu | 10h | 257 |
